# 发现估算持续时间2

Schedule from MS Project, 2020-03-16 to 2020-07-30, costs in ¥.
寰�杞�涓�鍥�

## Calendars

- 标准: Mon-Fri 08:00-12:00, 13:00-17:00; Sat-Sun off.

## Resources

| Resource | Rate |
| --- | --- |
| 项目经理 | 50 |
| UI专家 | 50 |
| 设计专家 | 50 |
| 需求专家 | 50 |
| 质量专家 | 50 |
| 测试员1 | 50 |
| 测试员2 | 50 |
| 程序员1 | 50 |
| 程序员2 | 50 |
| 程序员3 | 50 |
| 间接成本 |  |
| 储备 |  |

## Schedule

| ID | WBS | Task | Type | Duration | Start | Finish | Predecessors | Total slack | Resources | Work | Cost |
| --- | --- | --- | --- | --- | --- | --- | --- | --- | --- | --- | --- |
| 1 | 1 | **启动** |  | 5d | 2020-03-16 | 2020-03-20 |  | 0d | 储备 [0.1%]; 间接成本 [0.1%] | 104h | 6,700 |
| 2 | 1.1 | 组建核心团队 | manual | 1d | 2020-03-16 | 2020-03-16 |  |  | 项目经理; UI专家; 设计专家; 需求专家; 质量专家 | 40h | 2,000 |
| 3 | 1.2 | 干系人分析 | manual | 1d | 2020-03-17 | 2020-03-17 |  |  | 项目经理 | 8h | 400 |
| 4 | 1.3 | 里程碑计划 | manual | 1d | 2020-03-18 | 2020-03-18 |  |  | 项目经理 | 8h | 400 |
| 5 | 1.4 | 制定项目章程 | manual | 1d | 2020-03-19 | 2020-03-19 | 2, 3, 4 |  | 项目经理 | 8h | 400 |
| 6 | 1.5 | 项目启动大会 | manual | 1d | 2020-03-20 | 2020-03-20 | 5 |  | 项目经理; 需求专家; 设计专家; UI专家; 质量专家 | 40h | 2,000 |
| 7 | 2 | **规划** |  | 54d | 2020-03-25 | 2020-06-08 |  | 0d | 间接成本 [0.1%]; 储备 [0.1%] | 512h | 33,100 |
| 8 | 2.1 | **规划范围** |  | 18d | 2020-03-25 | 2020-04-17 |  | 0d |  | 208h | 10,400 |
| 9 | 2.1.1 | 制定需求说明书 | manual | 10d | 2020-03-25 | 2020-04-07 | 6 |  | 需求专家 | 80h | 4,000 |
| 10 | 2.1.2 | 界面设计 | manual | 5d | 2020-04-08 | 2020-04-14 | 9 |  | UI专家 | 40h | 2,000 |
| 11 | 2.1.3 | 详细设计说明书 | manual | 5d | 2020-04-08 | 2020-04-14 | 9 |  | 设计专家 | 40h | 2,000 |
| 12 | 2.1.4 | 项目范围说明书 | manual | 3d | 2020-04-08 | 2020-04-10 | 9 |  | 项目经理 | 24h | 1,200 |
| 13 | 2.1.5 | 创建WBS | manual | 2d | 2020-04-15 | 2020-04-16 | 10, 11, 12 |  | 项目经理 | 16h | 800 |
| 14 | 2.1.6 | 形成范围基准 | manual | 1d | 2020-04-17 | 2020-04-17 | 13 |  | 项目经理 | 8h | 400 |
| 15 | 2.2 | **规划时间** |  | 20d | 2020-04-20 | 2020-05-15 |  | 0d |  | 56h | 2,800 |
| 16 | 2.2.1 | 排列工作包顺序 | manual | 1d | 2020-04-20 | 2020-04-20 | 14 |  | 项目经理 | 8h | 400 |
| 17 | 2.2.2 | 估算资源 | manual | 2d | 2020-04-21 | 2020-04-22 | 16 |  | 项目经理 | 16h | 800 |
| 18 | 2.2.3 | 估算持续时间 | manual | 2d | 2020-05-04 | 2020-05-05 | 17 |  | 项目经理 | 16h | 800 |
| 19 | 2.2.4 | 制定进度计划 | manual | 1d | 2020-05-14 | 2020-05-14 | 18 |  | 项目经理 | 8h | 400 |
| 20 | 2.2.5 | 形成进度基准 | manual | 1d | 2020-05-15 | 2020-05-15 | 19 |  | 项目经理 | 8h | 400 |
| 21 | 2.3 | **规划成本** |  | 12d | 2020-05-18 | 2020-06-02 |  | 0d |  | 48h | 2,400 |
| 22 | 2.3.1 | 项目成本估算 | manual | 3d | 2020-05-18 | 2020-05-21 | 20 |  | 项目经理 | 24h | 1,200 |
| 23 | 2.3.2 | 项目预算 | manual | 2d | 2020-05-22 | 2020-06-01 | 22 |  | 项目经理 | 16h | 800 |
| 24 | 2.3.3 | 形成范围基准 | manual | 1d | 2020-06-02 | 2020-06-02 | 23 |  | 项目经理 | 8h | 400 |

| ID | WBS | Task | Type | Duration | Start | Finish | Predecessors | Total slack | Resources | Work | Cost |
| --- | --- | --- | --- | --- | --- | --- | --- | --- | --- | --- | --- |
| 25 | 2.4 | **规划质量** |  | 8d | 2020-04-20 | 2020-04-29 |  | 0d |  | 64h | 3,200 |
| 26 | 2.4.1 | 制定测试计划 | manual | 2d | 2020-04-20 | 2020-04-21 | 14 |  | 质量专家 | 16h | 800 |
| 27 | 2.4.2 | 制定测试用例 | manual | 6d | 2020-04-22 | 2020-04-29 | 26 |  | 质量专家 | 48h | 2,400 |
| 28 | 2.5 | **规划人力资源** |  | 4d | 2020-05-06 | 2020-05-11 |  | 0d |  | 32h | 1,600 |
| 29 | 2.5.1 | 制定人力资源计划 | manual | 2d | 2020-05-06 | 2020-05-07 | 17 |  | 项目经理 | 16h | 800 |
| 30 | 2.5.2 | 制定人员配备管理计划 | manual | 2d | 2020-05-08 | 2020-05-11 | 29 |  | 项目经理 | 16h | 800 |
| 31 | 2.6 | **规划沟通** |  | 2d | 2020-05-12 | 2020-05-13 |  | 0d |  | 16h | 800 |
| 32 | 2.6.1 | 制定沟通管理计划 | manual | 2d | 2020-05-12 | 2020-05-13 | 30 |  | 项目经理 | 16h | 800 |
| 33 | 2.7 | **规划采购** |  | 7d | 2020-04-23 | 2020-05-01 |  | 0d |  | 56h | 2,800 |
| 34 | 2.7.1 | 自制外购分析 | manual | 2d | 2020-04-23 | 2020-04-24 | 17 |  | 项目经理 | 16h | 800 |
| 35 | 2.7.2 | 制定采购文件 | manual | 5d | 2020-04-27 | 2020-05-01 | 34 |  | 项目经理 | 40h | 2,000 |
| 36 | 2.8 | **规划风险** |  | 3d | 2020-06-03 | 2020-06-05 |  | 0d |  | 24h | 1,200 |
| 37 | 2.8.1 | 识别风险 | manual | 1d | 2020-06-03 | 2020-06-03 | 15, 21, 25, 28, 31, 33 |  | 项目经理 | 8h | 400 |
| 38 | 2.8.2 | 风险分析 | manual | 1d | 2020-06-04 | 2020-06-04 | 37 |  | 项目经理 | 8h | 400 |
| 39 | 2.8.3 | 制定风险登记册 | manual | 1d | 2020-06-05 | 2020-06-05 | 38 |  | 项目经理 | 8h | 400 |
| 40 | 2.9 | 规划整合 | manual | 1d | 2020-06-08 | 2020-06-08 | 39 |  | 项目经理 | 8h | 400 |
| 41 | 3 | **执行与监控** |  | 37d | 2020-06-09 | 2020-07-29 |  | 0d | 间接成本 [0.1%]; 储备 [0.1%] | 848h | 57,400 |
| 42 | 3.1 | 组建项目团队 | manual | 9d | 2020-06-09 | 2020-06-19 | 7 |  | 项目经理; 测试员1; 测试员2; 程序员1; 程序员2; 程序员3 | 144h | 7,200 |
| 43 | 3.2 | **项目执行** |  | 27d | 2020-06-22 | 2020-07-28 |  | 0d |  | 344h | 17,200 |
| 44 | 3.2.1 | **用户模块** |  | 27d | 2020-06-22 | 2020-07-28 |  | 0d |  | 200h | 10,000 |
| 45 | 3.2.1.1 | 注册登录 | manual | 3d | 2020-06-22 | 2020-06-24 | 42 |  | 程序员1 | 24h | 1,200 |
| 46 | 3.2.1.2 | 首页 | manual | 3d | 2020-06-25 | 2020-06-29 | 45 |  | 程序员1 | 24h | 1,200 |
| 47 | 3.2.1.3 | 查看课程 | manual | 2d | 2020-06-30 | 2020-07-01 | 46 |  | 程序员1 | 16h | 800 |
| 48 | 3.2.1.4 | 搜索课程 | manual | 2d | 2020-07-02 | 2020-07-03 | 47 |  | 程序员1 | 16h | 800 |
| 49 | 3.2.1.5 | 浏览商品 | manual | 2d | 2020-07-06 | 2020-07-07 | 48 |  | 程序员1 | 16h | 800 |
| 50 | 3.2.1.6 | 搜索商品 | manual | 2d | 2020-07-08 | 2020-07-09 | 49 |  | 程序员1 | 16h | 800 |
| 51 | 3.2.1.7 | 购物车 | manual | 2d | 2020-07-10 | 2020-07-15 | 50 |  | 程序员1 | 16h | 800 |
| 52 | 3.2.1.8 | 下单 | manual | 2d | 2020-07-16 | 2020-07-17 | 51 |  | 程序员1 | 16h | 800 |
| 53 | 3.2.1.9 | 今日计划 | manual | 2d | 2020-07-20 | 2020-07-21 | 52 |  | 程序员1 | 16h | 800 |
| 54 | 3.2.1.10 | 知识社区 | manual | 2d | 2020-07-22 | 2020-07-23 | 53 |  | 程序员1 | 16h | 800 |
| 55 | 3.2.1.11 | 个人配置 | manual | 3d | 2020-07-24 | 2020-07-28 | 54 |  | 程序员1 | 24h | 1,200 |

| ID | WBS | Task | Type | Duration | Start | Finish | Predecessors | Total slack | Resources | Work | Cost |
| --- | --- | --- | --- | --- | --- | --- | --- | --- | --- | --- | --- |
| 56 | 3.2.2 | **讲师模块** |  | 10d | 2020-06-22 | 2020-07-03 |  | 0d |  | 80h | 4,000 |
| 57 | 3.2.2.1 | 注册入驻 | manual | 2d | 2020-06-22 | 2020-06-23 | 42 |  | 程序员2 | 16h | 800 |
| 58 | 3.2.2.2 | 课程管理 | manual | 3d | 2020-06-24 | 2020-06-26 | 57 |  | 程序员2 | 24h | 1,200 |
| 59 | 3.2.2.3 | 订单处理 | manual | 2d | 2020-06-29 | 2020-06-30 | 58 |  | 程序员2 | 16h | 800 |
| 60 | 3.2.2.4 | 统计 | manual | 1d | 2020-07-01 | 2020-07-01 | 59 |  | 程序员2 | 8h | 400 |
| 61 | 3.2.2.5 | 讲师配置 | manual | 2d | 2020-07-02 | 2020-07-03 | 60 |  | 程序员2 | 16h | 800 |
| 62 | 3.2.3 | **管理员模块** |  | 8d | 2020-06-22 | 2020-07-01 |  | 0d |  | 64h | 3,200 |
| 63 | 3.2.3.1 | 讲师审核 | manual | 2d | 2020-06-22 | 2020-06-23 | 42 |  | 程序员3 | 16h | 800 |
| 64 | 3.2.3.2 | 促销活动 | manual | 3d | 2020-06-24 | 2020-06-26 | 63 |  | 程序员3 | 24h | 1,200 |
| 65 | 3.2.3.3 | 统计分析 | manual | 1d | 2020-06-29 | 2020-06-29 | 64 |  | 程序员3 | 8h | 400 |
| 66 | 3.2.3.4 | 备份 | manual | 2d | 2020-06-30 | 2020-07-01 | 65 |  | 程序员3 | 16h | 800 |
| 67 | 3.3 | **项目监控** |  | 10d | 2020-06-22 | 2020-07-03 |  | 0d |  | 88h | 4,400 |
| 68 | 3.3.1 | 各项指标监控 | manual | 8d | 2020-06-22 | 2020-07-01 | 42 |  | 测试员1; 测试员2; 项目经理 | 24h | 1,200 |
| 69 | 3.3.2 | 监控评审 | manual | 1d | 2020-07-02 | 2020-07-02 | 68 |  | 设计专家; 项目经理; 需求专家; 质量专家 | 32h | 1,600 |
| 70 | 3.3.3 | 变更评审 | manual | 1d | 2020-07-03 | 2020-07-03 | 69 |  | 设计专家; 项目经理; 需求专家; 质量专家 | 8h | 400 |
| 71 | 3.3.4 | 例会 | manual | 1d | 2020-06-22 | 2020-06-22 | 42 |  | UI专家; 测试员1; 测试员2; 程序员1; 程序员2; 程序员3; 设计专家; 项目经理; 需求专家; 质量专家 | 24h | 1,200 |
| 72 | 3.4 | **管理干系人** |  | 3d | 2020-06-22 | 2020-06-24 |  | 0d |  | 24h | 1,200 |
| 73 | 3.4.1 | 发布项目信息 | manual | 1d | 2020-06-22 | 2020-06-22 | 42 |  | 项目经理 | 8h | 400 |
| 74 | 3.4.2 | 报告监控指标 | manual | 1d | 2020-06-23 | 2020-06-23 | 42 |  | 项目经理 | 8h | 400 |
| 75 | 3.4.3 | 干系人沟通 | manual | 1d | 2020-06-24 | 2020-06-24 | 42 |  | 项目经理 | 8h | 400 |
| 76 | 3.5 | **团队建设** |  | 3d | 2020-06-22 | 2020-06-24 |  | 0d |  | 48h | 2,400 |
| 77 | 3.5.1 | 培训 | manual | 1d | 2020-06-22 | 2020-06-22 | 42 |  | UI专家; 测试员1; 测试员2; 程序员1; 程序员2; 程序员3; 设计专家; 项目经理; 需求专家; 质量专家 | 8h | 400 |
| 78 | 3.5.2 | 娱乐活动 | manual | 1d | 2020-06-23 | 2020-06-23 | 42 |  | UI专家; 测试员1; 测试员2; 程序员1; 程序员2; 程序员3; 设计专家; 项目经理; 需求专家; 质量专家 | 32h | 1,600 |
| 79 | 3.5.3 | 沟通 | manual | 1d | 2020-06-24 | 2020-06-24 | 42 |  | UI专家; 测试员1; 测试员2; 程序员1; 程序员2; 程序员3; 设计专家; 项目经理; 需求专家; 质量专家 | 8h | 400 |
| 80 | 3.6 | 采购 | manual | 20d | 2020-06-25 | 2020-07-24 | 42 |  | 项目经理 | 160h | 8,000 |
| 81 | 3.7 | 项目验收 | manual | 1d | 2020-07-29 | 2020-07-29 | 43 |  | UI专家; 设计专家; 项目经理; 需求专家; 质量专家 | 40h | 2,000 |

| ID | WBS | Task | Type | Duration | Start | Finish | Predecessors | Total slack | Resources | Work | Cost |
| --- | --- | --- | --- | --- | --- | --- | --- | --- | --- | --- | --- |
| 82 | 4 | **收尾** |  | 1d | 2020-07-30 | 2020-07-30 |  | 0d | 间接成本 [0.1%]; 储备 [0.1%] | 72h | 5,100 |
| 83 | 4.1 | 项目终验 | manual | 1d | 2020-07-30 | 2020-07-30 | 81 |  | UI专家; 设计专家; 项目经理; 需求专家; 质量专家 | 32h | 1,600 |
| 84 | 4.2 | 结束采购 | manual | 1d | 2020-07-30 | 2020-07-30 | 81 |  | 项目经理 | 8h | 400 |
| 85 | 4.3 | 项目内部收尾 | manual | 1d | 2020-07-30 | 2020-07-30 | 81 |  | UI专家; 测试员1; 测试员2; 程序员1; 程序员2; 程序员3; 设计专家; 项目经理; 需求专家; 质量专家 | 32h | 1,600 |
